How a schedule from MS Project changed from version to version. A marks actual dates.

## Version 1 (saved 2025-11-26, file Объем.mpp)

Note of the change: add 4/1

| ID | WBS | Task | Duration | Start | Finish | Predecessors | Total float | Constraint |
| --- | --- | --- | --- | --- | --- | --- | --- | --- |
| 1 |  | Начало проекта | 0d | 2025-09-15 | 2025-09-15 |  | 310d |  |
| 2 | 2 | **Утверждение проектов** | 101d | 2025-09-15 | 2026-02-06 |  | 0d |  |
| 3 |  | Начало утверждения проектов | 1d | 2025-09-15 | 2025-09-15 |  | 0d |  |
| 4 |  | Утверждение проекта на строительство | 90d | 2025-09-16 | 2026-01-23 | 3 | 10d |  |
| 5 |  | Утверждение проекта на газ | 100d | 2025-09-16 | 2026-02-06 | 3 | 0d |  |
| 6 |  | Утверждение проекта на водопровод и канализацию | 60d | 2025-09-16 | 2025-12-10 | 3 | 40d |  |
| 7 |  | Утверждение проекта на отопление | 90d | 2025-09-16 | 2026-01-23 | 3 | 10d |  |
| 8 |  | Проекты утверждены | 0d | 2026-02-06 | 2026-02-06 | 4, 5, 6, 7 | 0d |  |
| 9 | 3 | **Строительство фундамента** | 47d | 2026-02-09 | 2026-04-14 |  | 0d |  |
| 10 |  | Начало закладки фундамента | 2d | 2026-02-09 | 2026-02-10 | 8 | 0d |  |
| 11 |  | Рытье траншей | 10d | 2026-02-11 | 2026-02-24 | 10 | 0d |  |
| 12 |  | Заливка фундамента | 5d | 2026-02-25 | 2026-03-03 | 11 | 0d |  |
| 13 |  | Фундамент завершен | 0d | 2026-04-14 | 2026-04-14 | 12FS+30d | 0d |  |
| 14 | 4 | **Каркас и крыша** | 111d | 2026-04-15 | 2026-09-18 |  | 0d |  |
| 15 |  | Начало каркаса | 1d | 2026-04-15 | 2026-04-15 | 13 | 0d |  |
| 16 |  | Кладка стен | 60d | 2026-04-16 | 2026-07-10 | 15 | 0d |  |
| 17 |  | Перекрытие стен | 15d | 2026-07-13 | 2026-07-31 | 16 | 0d |  |
| 18 |  | Установка крыши | 30d | 2026-08-03 | 2026-09-11 | 17 | 5d |  |
| 19 |  | Установка наружных дверей и окон | 7d | 2026-08-03 | 2026-08-11 | 17 | 28d |  |
| 20 |  | Установка полов | 5d | 2026-09-14 | 2026-09-18 | 17 | 0d |  |
| 21 |  | Каркас готов | 0d | 2026-09-18 | 2026-09-18 | 18, 19, 20 | 0d |  |
| 22 | 5 | **Коммуникации** | 11d | 2026-09-21 | 2026-10-05 |  | 0d |  |
| 23 |  | Начало установки коммуникаций | 1d | 2026-09-21 | 2026-09-21 | 21 | 0d |  |
| 24 |  | Проведение и подключение водопровода и канализации | 10d | 2026-09-22 | 2026-10-05 | 23 | 0d |  |
| 25 |  | Установка и подключение электропроводки | 5d | 2026-09-22 | 2026-09-28 | 23 | 5d |  |
| 26 |  | Установка и подключение газовых коммуникаций | 5d | 2026-09-22 | 2026-09-28 | 23 | 5d |  |
| 27 |  | Коммуникации готовы | 0d | 2026-10-05 | 2026-10-05 | 24, 25, 26 | 0d |  |
| 28 | 6 | **Внутренняя отделка** | 40d | 2026-10-05 | 2026-11-30 |  | 0d |  |
| 29 |  | Начало отделки | 0d | 2026-10-05 | 2026-10-05 | 27 | 0d |  |
| 30 |  | Внутренние двери | 10d | 2026-10-06 | 2026-10-19 | 29 | 0d |  |
| 31 |  | Навесные потолки | 5d | 2026-10-20 | 2026-10-26 | 30 | 5d |  |
| 32 |  | Отделка стен | 3d | 2026-11-05 | 2026-11-09 | 30 | 0d | as late as possible |
| 33 |  | Монтаж отопления | 10d | 2026-10-20 | 2026-11-02 | 30 | 0d |  |
| 34 |  | Установка оборудования, приборов, сантехники | 5d | 2026-11-03 | 2026-11-09 | 31, 33 | 0d |  |
| 35 |  | Настил полов | 15d | 2026-11-10 | 2026-11-30 | 32, 34 | 0d |  |
| 36 |  | Конец отделки | 0d | 2026-11-30 | 2026-11-30 | 35 | 0d |  |
| 37 |  | Конец проекта | 0d | 2026-11-30 | 2026-11-30 | 36 | 0d |  |

## Version 2 (saved 2025-11-27, file Факт.mpp)

Note of the change: add 4/1

Last finish 2026-11-30 → 2026-11-23 (-7d). Complete tasks 0 → 3.

Changed:

| ID | Task | Start | Finish | Duration | Complete | Total float | Other |
| --- | --- | --- | --- | --- | --- | --- | --- |
| 1 | Начало проекта |  |  |  |  | 310d → 305d | baseline start 2025-09-15 → none; baseline finish 2025-09-15 → none |
| 2 | **Утверждение проектов** |  |  |  |  | 0d → 204d | baseline start 2025-09-15 → none; baseline finish 2026-02-06 → none |
| 3 | Начало утверждения проектов |  |  |  |  | 0d → 204d | baseline start 2025-09-15 → none; baseline finish 2025-09-15 → none |
| 4 | Утверждение проекта на строительство |  |  |  |  | 10d → 214d | baseline start 2025-09-16 → none; baseline finish 2026-01-23 → none |
| 5 | Утверждение проекта на газ |  |  |  |  | 0d → 204d | baseline start 2025-09-16 → none; baseline finish 2026-02-06 → none |
| 6 | Утверждение проекта на водопровод и канализацию |  |  |  |  | 40d → 244d | baseline start 2025-09-16 → none; baseline finish 2025-12-10 → none |
| 7 | Утверждение проекта на отопление |  |  |  |  | 10d → 214d | baseline start 2025-09-16 → none; baseline finish 2026-01-23 → none |
| 8 | Проекты утверждены |  |  |  |  | 0d → 204d | baseline start 2026-02-06 → none; baseline finish 2026-02-06 → none |
| 9 | **Строительство фундамента** | 2026-02-09 → 2025-11-30 A (-71d) | 2026-04-14 → 2026-04-07 (-7d) | 47d → 90d | 0% → 99% |  | baseline start 2026-02-09 → none; baseline finish 2026-04-14 → none |
| 10 | Начало закладки фундамента | 2026-02-09 A | 2026-02-10 A |  | 0% → 100% | 0d → none | baseline start 2026-02-09 → none; baseline finish 2026-02-10 → none |
| 11 | Рытье траншей | 2026-02-11 A | 2026-02-24 → 2026-03-26 A (+30d) | 10d → 32d | 0% → 100% | 0d → none | baseline start 2026-02-11 → none; baseline finish 2026-02-24 → none |
| 12 | Заливка фундамента | 2026-02-25 → 2025-11-30 A (-87d) | 2026-03-03 → 2026-02-24 A (-7d) | 5d → 0d | 0% → 100% | 0d → none | resources Рабочий1; Рабочий2; Рабочий3; Подсобник1; Подсобник2; Песок [10 т]; Щебень [10 т]; Цемент [2.5 т]; Доска необрезная [3 м3]; Доставка [0.1%] → Рабочий1; Рабочий2; Рабочий3; Подсобник1; Подсобник2; Песок; Щебень; Цемент; Доска необрезная; Доставка [0.1%]; baseline start 2026-02-25 → none; baseline finish 2026-03-03 → none |
| 13 | Фундамент завершен | 2026-04-14 → 2026-04-07 (-7d) | 2026-04-14 → 2026-04-07 (-7d) |  |  |  | baseline start 2026-04-14 → none; baseline finish 2026-04-14 → none |
| 14 | **Каркас и крыша** | 2026-04-15 → 2026-04-08 (-7d) | 2026-09-18 → 2026-09-11 (-7d) |  |  |  | baseline start 2026-04-15 → none; baseline finish 2026-09-18 → none |
| 15 | Начало каркаса | 2026-04-15 → 2026-04-08 (-7d) | 2026-04-15 → 2026-04-08 (-7d) |  |  |  | baseline start 2026-04-15 → none; baseline finish 2026-04-15 → none |
| 16 | Кладка стен | 2026-04-16 → 2026-04-09 (-7d) | 2026-07-10 → 2026-07-02 (-8d) |  |  |  | baseline start 2026-04-16 → none; baseline finish 2026-07-10 → none |
| 17 | Перекрытие стен | 2026-07-13 → 2026-07-06 (-7d) | 2026-07-31 → 2026-07-24 (-7d) |  |  |  | baseline start 2026-07-13 → none; baseline finish 2026-07-31 → none |
| 18 | Установка крыши | 2026-08-03 → 2026-07-27 (-7d) | 2026-09-11 → 2026-09-04 (-7d) |  |  |  | baseline start 2026-08-03 → none; baseline finish 2026-09-11 → none |
| 19 | Установка наружных дверей и окон | 2026-08-03 → 2026-07-27 (-7d) | 2026-08-11 → 2026-08-04 (-7d) |  |  |  | baseline start 2026-08-03 → none; baseline finish 2026-08-11 → none |
| 20 | Установка полов | 2026-09-14 → 2026-09-07 (-7d) | 2026-09-18 → 2026-09-11 (-7d) |  |  |  | baseline start 2026-09-14 → none; baseline finish 2026-09-18 → none |
| 21 | Каркас готов | 2026-09-18 → 2026-09-11 (-7d) | 2026-09-18 → 2026-09-11 (-7d) |  |  |  | baseline start 2026-09-18 → none; baseline finish 2026-09-18 → none |
| 22 | **Коммуникации** | 2026-09-21 → 2026-09-14 (-7d) | 2026-10-05 → 2026-09-28 (-7d) |  |  |  | baseline start 2026-09-21 → none; baseline finish 2026-10-05 → none |
| 23 | Начало установки коммуникаций | 2026-09-21 → 2026-09-14 (-7d) | 2026-09-21 → 2026-09-14 (-7d) |  |  |  | baseline start 2026-09-21 → none; baseline finish 2026-09-21 → none |
| 24 | Проведение и подключение водопровода и канализации | 2026-09-22 → 2026-09-15 (-7d) | 2026-10-05 → 2026-09-28 (-7d) |  |  |  | baseline start 2026-09-22 → none; baseline finish 2026-10-05 → none |
| 25 | Установка и подключение электропроводки | 2026-09-22 → 2026-09-15 (-7d) | 2026-09-28 → 2026-09-21 (-7d) |  |  |  | baseline start 2026-09-22 → none; baseline finish 2026-09-28 → none |
| 26 | Установка и подключение газовых коммуникаций | 2026-09-22 → 2026-09-15 (-7d) | 2026-09-28 → 2026-09-21 (-7d) |  |  |  | baseline start 2026-09-22 → none; baseline finish 2026-09-28 → none |
| 27 | Коммуникации готовы | 2026-10-05 → 2026-09-28 (-7d) | 2026-10-05 → 2026-09-28 (-7d) |  |  |  | baseline start 2026-10-05 → none; baseline finish 2026-10-05 → none |
| 28 | **Внутренняя отделка** | 2026-10-05 → 2026-09-28 (-7d) | 2026-11-30 → 2026-11-23 (-7d) |  |  |  | baseline start 2026-10-05 → none; baseline finish 2026-11-30 → none |
| 29 | Начало отделки | 2026-10-05 → 2026-09-28 (-7d) | 2026-10-05 → 2026-09-28 (-7d) |  |  |  | baseline start 2026-10-05 → none; baseline finish 2026-10-05 → none |
| 30 | Внутренние двери | 2026-10-06 → 2026-09-29 (-7d) | 2026-10-19 → 2026-10-12 (-7d) |  |  |  | baseline start 2026-10-06 → none; baseline finish 2026-10-19 → none |
| 31 | Навесные потолки | 2026-10-20 → 2026-10-13 (-7d) | 2026-10-26 → 2026-10-19 (-7d) |  |  |  | baseline start 2026-10-20 → none; baseline finish 2026-10-26 → none |
| 32 | Отделка стен | 2026-11-05 → 2026-10-29 (-7d) | 2026-11-09 → 2026-11-02 (-7d) |  |  |  | baseline start 2026-11-05 → none; baseline finish 2026-11-09 → none |
| 33 | Монтаж отопления | 2026-10-20 → 2026-10-13 (-7d) | 2026-11-02 → 2026-10-26 (-7d) |  |  |  | baseline start 2026-10-20 → none; baseline finish 2026-11-02 → none |
| 34 | Установка оборудования, приборов, сантехники | 2026-11-03 → 2026-10-27 (-7d) | 2026-11-09 → 2026-11-02 (-7d) |  |  |  | baseline start 2026-11-03 → none; baseline finish 2026-11-09 → none |
| 35 | Настил полов | 2026-11-10 → 2026-11-03 (-7d) | 2026-11-30 → 2026-11-23 (-7d) |  |  |  | baseline start 2026-11-10 → none; baseline finish 2026-11-30 → none |
| 36 | Конец отделки | 2026-11-30 → 2026-11-23 (-7d) | 2026-11-30 → 2026-11-23 (-7d) |  |  |  | baseline start 2026-11-30 → none; baseline finish 2026-11-30 → none |
| 37 | Конец проекта | 2026-11-30 → 2026-11-23 (-7d) | 2026-11-30 → 2026-11-23 (-7d) |  |  |  | baseline start 2026-11-30 → none; baseline finish 2026-11-30 → none |

## Version 3 (data date 2025-11-27, saved 2025-11-27, file Задачи.mpp)

Note of the change: add 4/1

Last finish 2026-11-23 → 2026-11-30 (+7d). Complete tasks 3 → 0.

Changed:

| ID | Task | Start | Finish | Duration | Complete | Total float | Other |
| --- | --- | --- | --- | --- | --- | --- | --- |
| 9 | **Строительство фундамента** | 2025-11-30 A → 2026-02-09 (+71d) | 2026-04-07 → 2026-04-14 (+7d) | 90d → 47d | 99% → 0% | 0d → 5d |  |
| 10 | Начало закладки фундамента | 2026-02-09 A → 2026-02-09 | 2026-02-10 A → 2026-02-10 |  | 100% → 0% | none → 5d |  |
| 11 | Рытье траншей | 2026-02-11 A → 2026-02-11 | 2026-03-26 A → 2026-02-24 (-30d) | 32d → 10d | 100% → 0% | none → 5d |  |
| 12 | Заливка фундамента | 2025-11-30 A → 2026-02-25 (+87d) | 2026-02-24 A → 2026-03-03 (+7d) | 0d → 5d | 100% → 0% | none → 5d | resources Рабочий1; Рабочий2; Рабочий3; Подсобник1; Подсобник2; Песок; Щебень; Цемент; Доска необрезная; Доставка [0.1%] → Рабочий1; Рабочий2; Рабочий3; Подсобник1; Подсобник2; Песок [10 т]; Щебень [10 т]; Цемент [2.5 т]; Доска необрезная [3 м3]; Доставка [0.1%] |
| 13 | Фундамент завершен | 2026-04-07 → 2026-04-14 (+7d) | 2026-04-07 → 2026-04-14 (+7d) |  |  | 0d → 5d |  |
| 14 | **Каркас и крыша** | 2026-04-08 → 2026-04-15 A (+7d) | 2026-09-11 → 2026-09-18 (+7d) |  | 0% → 15% |  |  |
| 15 | Начало каркаса | 2026-04-08 → 2026-04-15 (+7d) | 2026-04-08 → 2026-04-15 (+7d) |  |  | 0d → 5d |  |
| 16 | Кладка стен | 2026-04-09 → 2026-04-16 A (+7d) | 2026-07-02 → 2026-07-10 (+8d) |  | 0% → 8% |  |  |
| 17 | Перекрытие стен | 2026-07-06 → 2026-07-13 A (+7d) | 2026-07-24 → 2026-07-31 (+7d) |  | 0% → 20% |  |  |
| 18 | Установка крыши | 2026-07-27 → 2026-08-03 A (+7d) | 2026-09-04 → 2026-09-11 (+7d) |  | 0% → 20% | 5d → 0d |  |
| 19 | Установка наружных дверей и окон | 2026-07-27 → 2026-08-03 A (+7d) | 2026-08-04 → 2026-08-11 (+7d) |  | 0% → 32% |  |  |
| 20 | Установка полов | 2026-09-07 → 2026-09-14 A (+7d) | 2026-09-11 → 2026-09-18 (+7d) |  | 0% → 20% |  |  |
| 21 | Каркас готов | 2026-09-11 → 2026-09-18 (+7d) | 2026-09-11 → 2026-09-18 (+7d) |  |  |  |  |
| 22 | **Коммуникации** | 2026-09-14 → 2026-09-21 (+7d) | 2026-09-28 → 2026-10-05 (+7d) |  |  |  |  |
| 23 | Начало установки коммуникаций | 2026-09-14 → 2026-09-21 (+7d) | 2026-09-14 → 2026-09-21 (+7d) |  |  |  |  |
| 24 | Проведение и подключение водопровода и канализации | 2026-09-15 → 2026-09-22 (+7d) | 2026-09-28 → 2026-10-05 (+7d) |  |  |  |  |
| 25 | Установка и подключение электропроводки | 2026-09-15 → 2026-09-22 (+7d) | 2026-09-21 → 2026-09-28 (+7d) |  |  |  |  |
| 26 | Установка и подключение газовых коммуникаций | 2026-09-15 → 2026-09-22 (+7d) | 2026-09-21 → 2026-09-28 (+7d) |  |  |  |  |
| 27 | Коммуникации готовы | 2026-09-28 → 2026-10-05 (+7d) | 2026-09-28 → 2026-10-05 (+7d) |  |  |  |  |
| 28 | **Внутренняя отделка** | 2026-09-28 → 2026-10-05 (+7d) | 2026-11-23 → 2026-11-30 (+7d) |  |  |  |  |
| 29 | Начало отделки | 2026-09-28 → 2026-10-05 (+7d) | 2026-09-28 → 2026-10-05 (+7d) |  |  |  |  |
| 30 | Внутренние двери | 2026-09-29 → 2026-10-06 (+7d) | 2026-10-12 → 2026-10-19 (+7d) |  |  |  |  |
| 31 | Навесные потолки | 2026-10-13 → 2026-10-20 (+7d) | 2026-10-19 → 2026-10-26 (+7d) |  |  |  |  |
| 32 | Отделка стен | 2026-10-29 → 2026-11-05 (+7d) | 2026-11-02 → 2026-11-09 (+7d) |  |  |  |  |
| 33 | Монтаж отопления | 2026-10-13 → 2026-10-20 (+7d) | 2026-10-26 → 2026-11-02 (+7d) |  |  |  |  |
| 34 | Установка оборудования, приборов, сантехники | 2026-10-27 → 2026-11-03 (+7d) | 2026-11-02 → 2026-11-09 (+7d) |  |  |  |  |
| 35 | Настил полов | 2026-11-03 → 2026-11-10 (+7d) | 2026-11-23 → 2026-11-30 (+7d) |  |  |  |  |
| 36 | Конец отделки | 2026-11-23 → 2026-11-30 (+7d) | 2026-11-23 → 2026-11-30 (+7d) |  |  |  |  |
| 37 | Конец проекта | 2026-11-23 → 2026-11-30 (+7d) | 2026-11-23 → 2026-11-30 (+7d) |  |  |  |  |

## Version 4 (data date 2025-11-27, saved 2025-11-27, file Процент.mpp)

Note of the change: add 4/1

Last finish stays 2026-11-30. Complete tasks 0 → 1.

Changed:

| ID | Task | Start | Finish | Complete | Total float |
| --- | --- | --- | --- | --- | --- |
| 2 | **Утверждение проектов** | 2025-09-15 A |  | 0% → 20% | 5d → 0d |
| 3 | Начало утверждения проектов | 2025-09-15 A | 2025-09-15 A | 0% → 100% | 5d → none |
| 4 | Утверждение проекта на строительство | 2025-09-16 A |  | 0% → 19% | 15d → 10d |
| 5 | Утверждение проекта на газ | 2025-09-16 A |  | 0% → 17% | 5d → 0d |
| 6 | Утверждение проекта на водопровод и канализацию | 2025-09-16 A |  | 0% → 28% | 45d → 40d |
| 7 | Утверждение проекта на отопление | 2025-09-16 A |  | 0% → 19% | 15d → 10d |
| 14 | **Каркас и крыша** | 2026-04-15 A → 2026-04-15 |  | 15% → 0% |  |
| 16 | Кладка стен | 2026-04-16 A → 2026-04-16 |  | 8% → 0% |  |
| 17 | Перекрытие стен | 2026-07-13 A → 2026-07-13 |  | 20% → 0% |  |
| 18 | Установка крыши | 2026-08-03 A → 2026-08-03 |  | 20% → 0% | 0d → 5d |
| 19 | Установка наружных дверей и окон | 2026-08-03 A → 2026-08-03 |  | 32% → 0% |  |
| 20 | Установка полов | 2026-09-14 A → 2026-09-14 |  | 20% → 0% |  |

## Version 5 (saved 2025-11-27, file Ресурсы.mpp)

Note of the change: add 4/1

Last finish stays 2026-11-30. Complete tasks 1 → 0.

Changed:

| ID | Task | Start | Finish | Complete | Total float |
| --- | --- | --- | --- | --- | --- |
| 2 | **Утверждение проектов** | 2025-09-15 A → 2025-09-15 |  | 20% → 0% | 0d → 1d |
| 3 | Начало утверждения проектов | 2025-09-15 A → 2025-09-15 | 2025-09-15 A → 2025-09-15 | 100% → 0% | none → 1d |
| 4 | Утверждение проекта на строительство | 2025-09-16 A → 2025-09-16 |  | 19% → 0% | 10d → 11d |
| 5 | Утверждение проекта на газ | 2025-09-16 A → 2025-09-16 |  | 17% → 0% | 0d → 1d |
| 6 | Утверждение проекта на водопровод и канализацию | 2025-09-16 A → 2025-09-16 |  | 28% → 0% | 40d → 41d |
| 7 | Утверждение проекта на отопление | 2025-09-16 A → 2025-09-16 |  | 19% → 0% | 10d → 11d |
| 9 | **Строительство фундамента** | 2026-02-09 A |  | 0% → 6% | 0d → 1d |
| 12 | Заливка фундамента | 2026-02-25 A |  | 0% → 20% | 0d → 1d |
| 28 | **Внутренняя отделка** | 2026-10-05 A |  | 0% → 13% |  |
| 34 | Установка оборудования, приборов, сантехники | 2026-11-03 A |  | 0% → 20% | 0d → 5d |
| 35 | Настил полов | 2026-11-10 A |  | 0% → 33% |  |
